# Simple Project Plan

Schedule from MS Project, 2020-06-15 to 2020-12-02, A marks actual dates.

## Calendars

- Standard: Mon-Fri 08:00-12:00, 13:00-17:00; Sat-Sun off.

## Schedule

| ID | WBS | Task | Type | Duration | Start | Finish | Predecessors | Complete | Constraint |
| --- | --- | --- | --- | --- | --- | --- | --- | --- | --- |
| 1 | 1 | **作業流程整理** |  | 8d | 2020-06-15 A | 2020-06-24 A |  | 100% |  |
| 2 | 1.1 | 收集現有作業文件 |  | 2d | 2020-06-15 A | 2020-06-16 A |  | 100% | start no earlier than 2020-06-15 |
| 3 | 1.2 | 討論流程, 繪製SOP |  | 3d | 2020-06-17 A | 2020-06-19 A | 2 | 100% |  |
| 4 | 1.3 | 文件整理, 歸納輸入欄位 |  | 2d | 2020-06-22 A | 2020-06-23 A | 3 | 100% |  |
| 5 | 1.4 | 二次開會(確認流程及文件) |  | 1d | 2020-06-24 A | 2020-06-24 A | 4 | 100% |  |
| 6 | 1.5 | 流程整理完成 | milestone | 0d | 2020-06-24 A | 2020-06-24 A | 5 | 100% |  |
| 7 | 2 | **規格文件製作與確認** |  | 67d | 2020-06-25 A | 2020-09-25 A | 1 | 100% |  |
| 8 | 2.1 | 資料表結構 |  | 3d | 2020-06-25 A | 2020-06-29 A |  | 100% |  |
| 9 | 2.2 | 介面設計樣式 |  | 2d | 2020-06-30 A | 2020-07-01 A | 8 | 100% |  |
| 10 | 2.3 | 二次開會(確認樣式) |  | 1d | 2020-07-02 A | 2020-07-02 A | 9 | 100% |  |
| 11 | 2.4 | 開發方式與安置主機確認 |  | 1d | 2020-07-03 A | 2020-07-03 A | 10 | 100% |  |
| 12 | 2.5 | 文件製作完成 |  | 11d | 2020-09-11 A | 2020-09-25 A | 11 | 100% | finish no earlier than 2020-09-25 |
| 13 | 3 | **程式開發** |  | 42d | 2020-07-06 A | 2020-09-01 A | 7 | 100% |  |
| 14 | 3.1 | 基本資料建檔 |  | 3d | 2020-07-06 A | 2020-07-08 A |  | 100% |  |
| 15 | 3.2 | 合約資料建檔 |  | 2d | 2020-07-09 A | 2020-07-10 A | 14 | 100% |  |
| 16 | 3.3 | 獎金試算 |  | 2d | 2020-07-13 A | 2020-07-14 A | 15 | 100% |  |
| 17 | 3.4 | 簡易報表輸出 |  | 3d | 2020-07-15 A | 2020-07-17 A | 16 | 100% |  |
| 18 | 3.5 | 開發完成 | milestone | 0d | 2020-07-17 A | 2020-07-17 A | 17 | 100% |  |
| 19 | 3.6 | **第二階段需求** |  | 34d | 2020-07-16 A | 2020-09-01 A |  | 100% |  |
| 20 | 3.6.1 | 需求匯整 | manual | 1d | 2020-07-16 A | 2020-07-16 A |  | 100% |  |
| 21 | 3.6.2 | 進貨流程, 進貨單 | inactive, manual | 5d | 2020-07-29 | 2020-08-04 |  |  |  |
| 22 | 3.6.3 | 庫存管理 | inactive, manual | 5d | 2020-08-03 | 2020-08-07 | 21 |  |  |
| 23 | 3.6.4 | 付款資訊資安規則變更 | manual | 2d | 2020-08-10 A | 2020-08-11 A | 22 | 100% |  |
| 24 | 3.6.5 | 專案明細改為可新增 | manual | 3d | 2020-08-12 A | 2020-08-14 A | 23 | 100% |  |
| 25 | 3.6.6 | 簽約日期改為多筆記錄, 可展期 | manual | 5d | 2020-08-17 A | 2020-08-21 A | 24 | 100% |  |
| 26 | 3.6.7 | 客戶與業務帳號建檔, 加入檢核 | manual | 2d | 2020-08-24 A | 2020-08-25 A | 25 | 100% |  |
| 27 | 3.6.8 | 供奉憑證, 購買證明多筆建檔 | manual | 2d | 2020-08-26 A | 2020-08-27 A | 26 | 100% |  |
| 28 | 3.6.9 | 頁面及下拉選單增加搜尋功能 | manual | 5d | 2020-08-26 A | 2020-09-01 A | 26 | 100% |  |
| 29 | 4 | 內部測試 |  | 5d | 2020-07-20 A | 2020-07-24 A | 13 | 100% |  |
| 30 | 5 | 外部測試 |  | 5d | 2020-07-27 A | 2020-07-31 A | 29 | 100% |  |
| 31 | 6 | 開放使用 |  | 1d | 2020-08-03 A | 2020-08-03 A | 30 | 100% |  |

Notes:
- 1: 這是摘要任務。使用摘要任務協助將專案組織成不同的部分。
- 2: 1.現行合約紙本 / 2.客戶資料(sample) / 3.廠商/業務資料(sample) / 4.獎金計算規則 / 5.現行紙本流程 / 6.對應窗口與分機
- 6: 這是里程碑任務。將任務設定為 0d 工期，以便在專案中標示事件。
- 8: 旁邊有圖釘的任務是手動排程任務。如果您不希望專案移動任務，則可使用此方法。此外，您可以在工期、開始及結束欄位中輸入自由格式文字，或者，若尚無任何資訊，則可保留空白。

| ID | WBS | Task | Duration | Start | Finish | Complete | Remaining | Total slack | Constraint |
| --- | --- | --- | --- | --- | --- | --- | --- | --- | --- |
| 32 | 7 | **三階段需求** | 42d | 2020-10-06 A | 2020-12-02 | 57% | 18.08d | 0d |  |
| 33 | 7.1 | 推薦人欄位更改為必填 | 12d | 2020-10-06 A | 2020-10-21 A | 100% |  |  | finish no earlier than 2020-10-21 |
| 34 | 7.2 | **業績獎金、超級獎金設定更改為通用** | 18d | 2020-10-15 A | 2020-11-09 | 56% | 8d | 17d |  |
| 35 | 7.2.1 | 提出草案 | 1d | 2020-10-15 A | 2020-10-15 A | 100% |  |  |  |
| 36 | 7.2.2 | 等待使用者覆核確認 | 1d | 2020-10-16 A | 2020-10-16 A | 100% |  |  |  |
| 37 | 7.2.3 | 程式開發 | 3d | 2020-10-19 A | 2020-10-21 A | 100% |  |  |  |
| 38 | 7.2.4 | 使用者測試 | 2d | 2020-10-22 | 2020-10-23 |  |  | 28d | start no earlier than 2020-10-22 |
| 39 | 7.2.5 | 提供變更後操作手冊 | 2d | 2020-11-06 | 2020-11-09 |  |  | 17d | start no earlier than 2020-11-06 |
| 40 | 7.3 | 業務員欄位改為必填 | 2d | 2020-10-06 A | 2020-10-07 A | 100% |  |  |  |
| 41 | 7.4 | 業務員查詢，代號為0，上層名稱為經銷商 | 3d | 2020-10-06 A | 2020-10-08 A | 100% |  |  |  |
| 42 | 7.5 | 客戶代號加上* | 12d | 2020-10-06 A | 2020-10-21 A | 100% |  |  |  |
| 43 | 7.6 | **系統自動派號(契約、憑證、證明)** | 9d | 2020-10-22 A | 2020-11-03 | 58% | 3.75d | 21d |  |
| 44 | 7.6.1 | 討論取號規則及取號時間點 | 1d | 2020-10-22 A | 2020-10-22 A | 100% |  |  |  |
| 45 | 7.6.2 | 提出草案 | 2d | 2020-10-22 A | 2020-10-23 A | 100% |  |  |  |
| 46 | 7.6.3 | 等待使用者覆核確認 | 1d | 2020-10-26 A | 2020-10-26 A | 100% |  |  |  |
| 47 | 7.6.4 | 程式開發 | 3d | 2020-10-27 A | 2020-10-29 A | 100% |  |  |  |
| 48 | 7.6.5 | 使用者測試 | 2d | 2020-11-02 | 2020-11-03 |  |  | 21d | start no earlier than 2020-11-02 |
| 49 | 7.6.6 | 提供變更後操作手冊 | 3d | 2020-10-30 | 2020-11-03 |  |  | 21d | start no earlier than 2020-10-30 |
| 50 | 7.7 | **變更訂單流程** | 10d | 2020-11-10 | 2020-11-23 |  |  | 7d |  |
| 51 | 7.7.1 | 討論 | 1d | 2020-11-10 | 2020-11-10 |  |  | 16d | start no earlier than 2020-11-10 |
| 52 | 7.7.2 | 提出草案 | 2d | 2020-11-11 | 2020-11-12 |  |  | 14d | start no earlier than 2020-11-11 |
| 53 | 7.7.3 | 等待使用者覆核確認 | 1d | 2020-11-13 | 2020-11-13 |  |  | 13d | start no earlier than 2020-11-13 |
| 54 | 7.7.4 | 程式開發 | 3d | 2020-11-16 | 2020-11-18 |  |  | 10d | start no earlier than 2020-11-16 |
| 55 | 7.7.5 | 使用者測試 | 3d | 2020-11-19 | 2020-11-23 |  |  | 7d | start no earlier than 2020-11-19 |
| 56 | 7.7.6 | 提供變更後操作手冊 | 3d | 2020-11-19 | 2020-11-23 |  |  | 7d | start no earlier than 2020-11-19 |

Notes:
- 35: 專案設定介面變更 / 業績獎金設定入口 / 超級獎金設定入口 / 佣金明細計算方式改變(異動資料庫)
- 45: 1. 訂單建立流程更改(異動資料庫) / 2.憑證建立流程更改(異動資料庫) / 證明建立流程更改(異動資料庫)
- 50: 加入財務稽核控管，並增設訂單流程狀態 / 付款資訊在訂單建立階段填寫
- 51: 加入財務稽核後的訂單流程 / 以及訂單狀態 / 付款資訊及發票操作方式
- 52: 訂單建立流程更改 / 訂單新增狀態(異動資料庫) / 訂單加入覆核功能(異動資料庫)

| ID | WBS | Task | Duration | Start | Finish | Total slack | Constraint |
| --- | --- | --- | --- | --- | --- | --- | --- |
| 57 | 7.8 | **專案設定加入PV值** | 7d | 2020-11-24 | 2020-12-02 | 0d |  |
| 58 | 7.8.1 | 討論PV值設定方式 | 1d | 2020-11-24 | 2020-11-24 | 6d | start no earlier than 2020-11-24 |
| 59 | 7.8.2 | 提出草案 | 1d | 2020-11-25 | 2020-11-25 | 5d | start no earlier than 2020-11-25 |
| 60 | 7.8.3 | 等待使用者覆核確認 | 1d | 2020-11-26 | 2020-11-26 | 4d | start no earlier than 2020-11-26 |
| 61 | 7.8.4 | 程式開發 | 2d | 2020-11-27 | 2020-11-30 | 2d | start no earlier than 2020-11-27 |
| 62 | 7.8.5 | 使用者測試 | 2d | 2020-12-01 | 2020-12-02 | 0d | start no earlier than 2020-12-01 |
| 63 | 7.8.6 | 提供變更後操作手冊 | 2d | 2020-12-01 | 2020-12-02 | 0d | start no earlier than 2020-12-01 |

Notes:
- 59: 1. 專案設定流程更改 / 2.專案新增欄位(異動資料庫) / 專案修改功能(異動資料庫)
